# БилетON

How a schedule from MS Project XML changed from version to version. A marks actual dates.

## Version 1 (saved 2026-11-06)

Note of the change: docs: ЛР4 по исправленной WBS, Гант BiletON_Gantt.xml и пояснение длительностей

| ID | WBS | Task | Duration | Start | Finish | Predecessors | Constraint |
| --- | --- | --- | --- | --- | --- | --- | --- |
| 1 | 1.0 | **Управление проектом и документация (командный менеджмент)** | 39d | 2026-10-19 08:00 | 2026-12-11 17:00 |  |  |
| 2 |  | Разработка Устава проекта, согласование со стейкхолдерами | 8h | 2026-10-19 08:00 | 2026-10-19 17:00 |  |  |
| 3 |  | Декомпозиция WBS, построение диаграммы Ганта | 4h | 2026-10-20 08:00 | 2026-10-20 12:00 | 2 |  |
| 4 |  | Модерация Scrum-событий (планирование спринтов, дейли, ретро) | 312h | 2026-10-19 08:00 | 2026-12-11 17:00 |  |  |
| 5 |  | Участие в ежедневных летучках и обновление статусов в Trello/Jira | 312h | 2026-10-19 08:00 | 2026-12-11 17:00 |  |  |
| 6 |  | Ведение реестра рисков и расчёт метрик EVM | 312h | 2026-10-19 08:00 | 2026-12-11 17:00 |  |  |
| 7 |  | Финальная ретроспектива (Start-Stop-Continue) | 2h | 2026-12-09 11:00 | 2026-12-09 14:00 | 18 |  |
| 8 |  | Внедрение и сопровождение User Manual | 4h | 2026-12-04 16:00 | 2026-12-07 11:00 | 56 |  |
| 9 |  | Сборка портфолио и подготовка презентации к защите | 8h | 2026-12-07 16:00 | 2026-12-08 16:00 | 57 |  |
| 10 |  | Подготовка к защите, сдача проекта | 4h | 2026-12-09 14:00 | 2026-12-10 09:00 | 7, 8, 9 |  |
| 11 |  | Защита проекта (13 декабря) | 0h | 2026-12-10 09:00 | 2026-12-10 09:00 | 10 |  |
| 12 | 2.0 | **Организация инфраструктуры разработки (DevOps)** | 35.38d | 2026-10-20 08:00 | 2026-12-09 11:00 |  |  |
| 13 |  | Инициализация Git-репозитория, настройка Git-flow (main, dev, feature) | 4h | 2026-10-20 08:00 | 2026-10-20 12:00 | 2 |  |
| 14 |  | Разработка инструкции по локальному запуску проекта (README) | 4h | 2026-10-20 13:00 | 2026-10-20 17:00 | 13 |  |
| 15 |  | Настройка пайплайна CI (GitHub Actions: линтеры/тесты) | 6h | 2026-10-20 13:00 | 2026-10-21 10:00 | 13 |  |
| 16 |  | Развёртывание локальной СУБД PostgreSQL для тестов | 4h | 2026-10-20 13:00 | 2026-10-20 17:00 | 13 |  |
| 17 |  | Настройка скриптов деплоя на тестовый сервер (VPS) | 6h | 2026-10-21 10:00 | 2026-10-21 17:00 | 15 |  |
| 18 |  | Деплой финальной версии на сервер | 4h | 2026-12-08 16:00 | 2026-12-09 11:00 | 58, 17 |  |
| 19 | 3.0 | **Модуль «Авторизация и профиль» (Спринт 1)** | 3.75d | 2026-10-20 13:00 | 2026-10-26 10:00 |  |  |
| 20 |  | Написание Use Cases и критериев DoD для входа/регистрации | 4h | 2026-10-20 13:00 | 2026-10-20 17:00 | 3 |  |
| 21 |  | Проектирование и создание таблицы users | 4h | 2026-10-21 08:00 | 2026-10-21 12:00 | 20, 13 |  |
| 22 |  | Реализация JWT-авторизации и разграничения ролей | 12h | 2026-10-21 13:00 | 2026-10-22 17:00 | 21 |  |
| 23 |  | Вёрстка страниц входа и регистрации по макету | 8h | 2026-10-21 08:00 | 2026-10-21 17:00 | 20 |  |
| 24 |  | Интеграция форм с API авторизации (сохранение токена) | 6h | 2026-10-23 08:00 | 2026-10-23 15:00 | 22, 23 |  |
| 25 |  | Написание чек-листа тестирования безопасности | 2h | 2026-10-21 08:00 | 2026-10-21 10:00 | 20 |  |
| 26 |  | Прогон тестов, заведение багов в Jira | 4h | 2026-10-23 15:00 | 2026-10-26 10:00 | 24, 25, 16 |  |
| 27 | 4.0 | **Модуль «Афиша и сеансы» (Спринт 2)** | 3.5d | 2026-11-02 08:00 | 2026-11-06 12:00 |  |  |
| 28 |  | Формирование User Stories на просмотр афиши и расписания | 2h | 2026-11-02 08:00 | 2026-11-02 10:00 | 20 | start no earlier than 2026-11-02 08:00 |
| 29 |  | Создание таблиц movies, sessions | 6h | 2026-11-02 10:00 | 2026-11-02 17:00 | 28 |  |
| 30 |  | Разработка эндпоинтов GET /movies и GET /sessions | 8h | 2026-11-03 08:00 | 2026-11-03 17:00 | 29, 22 |  |
| 31 |  | Вёрстка карточек фильмов и страницы выбора сеанса | 10h | 2026-11-02 10:00 | 2026-11-03 12:00 | 28 |  |
| 32 |  | Подключение API афиши к интерфейсу | 6h | 2026-11-05 08:00 | 2026-11-05 15:00 | 30, 31 |  |
| 33 |  | Написание тест-кейсов на отображение пустого расписания | 2h | 2026-11-02 10:00 | 2026-11-02 12:00 | 28 |  |
| 34 |  | Проверка вёрстки на разных разрешениях, фикс багов | 6h | 2026-11-05 15:00 | 2026-11-06 12:00 | 32, 33 |  |
| 35 | 5.0 | **Модуль «Схема зала и бронирование» (Спринт 3)** | 5d | 2026-11-16 08:00 | 2026-11-20 17:00 |  |  |
| 36 |  | Описание логики блокировки мест при одновременном бронировании | 4h | 2026-11-16 08:00 | 2026-11-16 12:00 | 28 | start no earlier than 2026-11-16 08:00 |
| 37 |  | Разработка структуры таблиц halls, seats, bookings | 6h | 2026-11-16 13:00 | 2026-11-17 10:00 | 36 |  |
| 38 |  | API POST /bookings с SELECT FOR UPDATE (защита от двойных продаж) | 16h | 2026-11-17 10:00 | 2026-11-19 10:00 | 37 |  |
| 39 |  | Вёрстка интерактивной схемы зала (CSS Grid, статусы мест) | 14h | 2026-11-16 13:00 | 2026-11-18 10:00 | 36 |  |
| 40 |  | Интеграция: запрос на бронь и обработка HTTP 409 | 8h | 2026-11-19 10:00 | 2026-11-20 10:00 | 38, 39 |  |
| 41 |  | Скрипт имитации одновременного бронирования (нагрузочный тест) | 8h | 2026-11-19 10:00 | 2026-11-20 10:00 | 38 |  |
| 42 |  | Прогон сценариев, проверка отката транзакции | 6h | 2026-11-20 10:00 | 2026-11-20 17:00 | 40, 41 |  |
| 43 | 6.0 | **Спринт 4. Оплата, QR, панель контроллера и финальное тестирование** | 6.88d | 2026-11-30 08:00 | 2026-12-08 16:00 |  |  |
| 44 |  | Сценарий успешной/неуспешной оплаты и формат данных для QR | 3h | 2026-11-30 08:00 | 2026-11-30 11:00 | 36 | start no earlier than 2026-11-30 08:00 |
| 45 |  | Создание таблицы tickets, связь с bookings | 4h | 2026-11-30 11:00 | 2026-11-30 16:00 | 44 |  |
| 46 |  | Имитация оплаты, генерация QR (qrcode), API получения QR | 12h | 2026-11-30 16:00 | 2026-12-02 11:00 | 45 |  |
| 47 |  | Вёрстка страницы оплаты и личного кабинета с билетами | 8h | 2026-11-30 11:00 | 2026-12-01 11:00 | 44 |  |
| 48 |  | Отрисовка QR-кода на экране телефона (base64 через API) | 6h | 2026-12-02 11:00 | 2026-12-03 09:00 | 46, 47 |  |
| 49 |  | Тестирование сценариев сбоя оплаты | 4h | 2026-12-02 11:00 | 2026-12-02 16:00 | 46 |  |
| 50 |  | Проверка читаемости QR-кода обычным сканером | 4h | 2026-12-03 09:00 | 2026-12-03 14:00 | 48 |  |
| 51 |  | Требования к интерфейсу контроллера (ввод кода/сканирование) | 2h | 2026-11-30 11:00 | 2026-11-30 14:00 | 44 |  |
| 52 |  | API валидации билета (действителен/просрочен/подделка) | 6h | 2026-12-02 11:00 | 2026-12-03 09:00 | 46, 51 |  |
| 53 |  | Вёрстка страницы контроллера | 6h | 2026-12-03 09:00 | 2026-12-03 16:00 | 51, 48 |  |
| 54 |  | Интеграция страницы контроллера с API валидации | 4h | 2026-12-03 16:00 | 2026-12-04 11:00 | 52, 53 |  |
| 55 |  | Создание базы тестовых QR-кодов | 4h | 2026-12-03 09:00 | 2026-12-03 14:00 | 52 |  |
| 56 |  | Тестирование проходного режима | 4h | 2026-12-04 11:00 | 2026-12-04 16:00 | 54, 55 |  |
| 57 |  | End-to-End тестирование: от регистрации до прохода по QR | 8h | 2026-12-04 16:00 | 2026-12-07 16:00 | 49, 50, 56 |  |
| 58 |  | Регрессионное тестирование | 8h | 2026-12-07 16:00 | 2026-12-08 16:00 | 57 |  |

## Version 2 (saved 2026-11-09)

Note of the change: Merge branch 'dev' into feature/movies-sessions-api

Last finish stays 2026-12-11.

Added:

| ID | Task | Duration | Start | Finish | Predecessors |
| --- | --- | --- | --- | --- | --- |
| 12 | Проект завершён (дедлайн 13.12) | 0h | 2026-12-11 17:00 | 2026-12-11 17:00 | 11, 4, 5, 6 |
| 28 | Спринт 1 принят | 0h | 2026-10-26 10:00 | 2026-10-26 10:00 | 27 |
| 37 | Спринт 2 принят | 0h | 2026-11-06 12:00 | 2026-11-06 12:00 | 36 |
| 46 | Спринт 3 принят | 0h | 2026-11-20 17:00 | 2026-11-20 17:00 | 45 |
| 63 | Спринт 4 принят | 0h | 2026-12-08 16:00 | 2026-12-08 16:00 | 62 |

Changed:

| ID | Task | Start | Finish | Predecessors | Other |
| --- | --- | --- | --- | --- | --- |
| 11 | Защита проекта |  |  |  | was named Защита проекта (13 декабря) |
| 16 | Настройка пайплайна CI (GitHub Actions: линтеры/тесты) | 2026-10-20 13:00 → 2026-10-21 08:00 (+1d) | 2026-10-21 10:00 → 2026-10-21 15:00 | 14 → 14, 15 |  |
| 18 | Настройка скриптов деплоя на тестовый сервер (VPS) | 2026-10-21 10:00 → 2026-10-21 15:00 | 2026-10-21 17:00 → 2026-10-22 12:00 (+1d) |  |  |
| 19 | Деплой финальной версии на сервер |  |  | 62, 18 → 63, 18 |  |
| 30 | Формирование User Stories на просмотр афиши и расписания |  |  | 21 → 28FS+38h | constraint start no earlier than 2026-11-02 08:00 → none |
| 39 | Описание логики блокировки мест при одновременном бронировании |  |  | 30 → 37FS+44h | constraint start no earlier than 2026-11-16 08:00 → none |
| 48 | Сценарий успешной/неуспешной оплаты и формат данных для QR |  |  | 39 → 46FS+40h | constraint start no earlier than 2026-11-30 08:00 → none |

## Version 3 (saved 2026-11-18)

Note of the change: docs: исправления диаграммы Ганта по требованиям преподавателя

Last finish stays 2026-12-11.

Added:

| ID | Task | Duration | Start | Finish |
| --- | --- | --- | --- | --- |
| 2 | Организация инфраструктуры разработки (DevOps) | 300h | 2026-10-20 08:00 | 2026-12-11 12:00 |
| 3 | Модуль «Авторизация и профиль» (Спринт 1) | 52h | 2026-10-20 13:00 | 2026-10-28 17:00 |
| 4 | Модуль «Афиша и сеансы» (Спринт 2) | 30h | 2026-11-02 08:00 | 2026-11-06 15:00 |
| 5 | Модуль «Схема зала и бронирование» (Спринт 3) | 44h | 2026-11-16 08:00 | 2026-11-23 12:00 |
| 7 | **Еженедельные практики (повторяющиеся задачи)** | 276h | 2026-10-19 08:00 | 2026-12-07 12:00 |

Removed: 13 Организация инфраструктуры разработки (DevOps); 20 Модуль «Авторизация и профиль» (Спринт 1); 29 Модуль «Афиша и сеансы» (Спринт 2); 38 Модуль «Схема зала и бронирование» (Спринт 3)

Changed:

| ID | Task | Start | Finish | Duration | Predecessors | Other |
| --- | --- | --- | --- | --- | --- | --- |
| 1 | Управление проектом и документация (командный менеджмент) |  |  | 39d → 312h |  |  |
| 6 | **Спринт 4. Оплата, QR, панель контроллера и финальное тестирование** |  | 2026-12-08 16:00 → 2026-12-09 17:00 (+1d) | 6.88d → 64h |  |  |
| 8 | Модерация Scrum-событий (планирование спринтов, дейли, ретро) |  | 2026-12-11 17:00 → 2026-10-19 09:00 (-53d) | 312h → 1h |  | resources PM / Backend [5.13%] → none |
| 17 | Участие в ежедневных летучках и обновление статусов в Trello/Jira |  | 2026-12-11 17:00 → 2026-10-19 09:00 (-53d) | 312h → 1h |  | resources PM / Backend [5.13%]; Lead Dev [5.13%]; Frontend [5.13%]; QA [5.13%]; Аналитик [5.13%] → none |
| 26 | Ведение реестра рисков и расчёт метрик EVM |  | 2026-12-11 17:00 → 2026-10-19 09:00 (-53d) | 312h → 1h |  | resources PM / Backend [2.56%] → none |
| 35 | Разработка Устава проекта, согласование со стейкхолдерами | 2026-10-19 08:00 → 2026-10-20 13:00 (+1d) | 2026-10-19 17:00 → 2026-10-21 12:00 (+2d) |  |  |  |
| 36 | Декомпозиция WBS, построение диаграммы Ганта |  |  |  | 35 → none |  |
| 37 | Финальная ретроспектива (Start-Stop-Continue) | 2026-12-09 11:00 → 2026-12-10 08:00 (+1d) | 2026-12-09 14:00 → 2026-12-10 10:00 (+1d) |  | 48 → 88 |  |
| 38 | Внедрение и сопровождение User Manual | 2026-12-04 16:00 → 2026-12-02 13:00 (-2d) | 2026-12-07 11:00 → 2026-12-02 17:00 (-5d) |  | 85 → none |  |
| 39 | Сборка портфолио и подготовка презентации к защите | 2026-12-07 16:00 → 2026-12-03 08:00 (-4d) | 2026-12-08 16:00 → 2026-12-03 17:00 (-5d) |  | 86 → 38 |  |
| 40 | Подготовка к защите, сдача проекта | 2026-12-09 14:00 → 2026-12-10 10:00 (+1d) | 2026-12-10 09:00 → 2026-12-10 15:00 |  | 37, 38, 39 → 37, 39 |  |
| 41 | Защита проекта | 2026-12-10 09:00 → 2026-12-11 13:00 (+1d) | 2026-12-10 09:00 → 2026-12-11 13:00 (+1d) |  | 40 → 40, 48 |  |
| 42 | Проект завершён (дедлайн 13.12) |  |  |  | 41, 8, 17, 26 → 41 |  |
| 43 | Инициализация Git-репозитория, настройка Git-flow (main, dev, feature) | 2026-10-20 08:00 → 2026-10-21 13:00 (+1d) | 2026-10-20 12:00 → 2026-10-21 17:00 (+1d) |  | 35 → none |  |
| 44 | Разработка инструкции по локальному запуску проекта (README) |  |  |  | 43 → none |  |
| 45 | Настройка пайплайна CI (GitHub Actions: линтеры/тесты) | 2026-10-21 08:00 → 2026-10-22 08:00 (+1d) | 2026-10-21 15:00 → 2026-10-22 15:00 (+1d) |  |  |  |
| 46 | Развёртывание локальной СУБД PostgreSQL для тестов |  |  |  | 43 → none |  |
| 47 | Настройка скриптов деплоя на тестовый сервер (VPS) | 2026-10-21 15:00 → 2026-10-27 08:00 (+6d) | 2026-10-22 12:00 → 2026-10-27 15:00 (+5d) |  |  |  |
| 48 | Деплой финальной версии на сервер | 2026-12-08 16:00 → 2026-12-11 08:00 (+3d) | 2026-12-09 11:00 → 2026-12-11 12:00 (+2d) |  | 88, 47 → none |  |
| 49 | Написание Use Cases и критериев DoD для входа/регистрации |  |  |  | 36 → none | resources Аналитик; QA → Аналитик |
| 50 | Проектирование и создание таблицы users | 2026-10-21 08:00 → 2026-10-22 15:00 (+1d) | 2026-10-21 12:00 → 2026-10-23 10:00 (+2d) |  | 49, 43 → 49 |  |
| 51 | Реализация JWT-авторизации и разграничения ролей | 2026-10-21 13:00 → 2026-10-23 10:00 (+2d) | 2026-10-22 17:00 → 2026-10-26 15:00 (+4d) |  |  |  |
| 53 | Интеграция форм с API авторизации (сохранение токена) | 2026-10-23 08:00 → 2026-10-27 08:00 (+4d) | 2026-10-23 15:00 → 2026-10-27 15:00 (+4d) |  |  |  |
| 55 | Прогон тестов, заведение багов в Jira | 2026-10-23 15:00 → 2026-10-27 15:00 (+4d) | 2026-10-26 10:00 → 2026-10-28 10:00 (+2d) |  | 53, 54, 46 → 53, 54 |  |
| 56 | Спринт 1 принят | 2026-10-26 10:00 → 2026-10-28 10:00 (+2d) | 2026-10-26 10:00 → 2026-10-28 10:00 (+2d) |  |  |  |
| 57 | Формирование User Stories на просмотр афиши и расписания |  |  |  | 56FS+38h → 56FS+2.88d |  |
| 58 | Создание таблиц movies, sessions | 2026-11-02 10:00 → 2026-11-02 13:00 | 2026-11-02 17:00 → 2026-11-03 10:00 (+1d) |  |  |  |
| 59 | Разработка эндпоинтов GET /movies и GET /sessions | 2026-11-03 08:00 → 2026-11-03 10:00 | 2026-11-03 17:00 → 2026-11-05 10:00 (+2d) |  | 58, 51 → 58 |  |
| 60 | Вёрстка карточек фильмов и страницы выбора сеанса | 2026-11-02 10:00 → 2026-11-02 13:00 | 2026-11-03 12:00 → 2026-11-03 15:00 |  |  |  |
| 61 | Подключение API афиши к интерфейсу | 2026-11-05 08:00 → 2026-11-05 10:00 | 2026-11-05 15:00 → 2026-11-05 17:00 |  |  |  |
| 62 | Написание тест-кейсов на отображение пустого расписания | 2026-11-02 10:00 → 2026-11-02 13:00 | 2026-11-02 12:00 → 2026-11-02 15:00 |  |  |  |
| 63 | Проверка вёрстки на разных разрешениях, фикс багов | 2026-11-05 15:00 → 2026-11-06 08:00 (+1d) | 2026-11-06 12:00 → 2026-11-06 15:00 |  |  |  |
| 64 | Спринт 2 принят | 2026-11-06 12:00 → 2026-11-06 15:00 | 2026-11-06 12:00 → 2026-11-06 15:00 |  |  |  |
| 65 | Описание логики блокировки мест при одновременном бронировании | 2026-11-16 08:00 → 2026-11-16 09:00 | 2026-11-16 12:00 → 2026-11-16 14:00 |  | 64FS+44h → 64FS+5.25d |  |
| 66 | Разработка структуры таблиц halls, seats, bookings | 2026-11-16 13:00 → 2026-11-16 14:00 | 2026-11-17 10:00 → 2026-11-17 11:00 |  |  |  |
| 67 | API POST /bookings с SELECT FOR UPDATE (защита от двойных продаж) | 2026-11-17 10:00 → 2026-11-17 11:00 | 2026-11-19 10:00 → 2026-11-19 11:00 |  |  |  |
| 68 | Вёрстка интерактивной схемы зала (CSS Grid, статусы мест) | 2026-11-16 13:00 → 2026-11-16 14:00 | 2026-11-18 10:00 → 2026-11-18 11:00 |  |  |  |
| 69 | Интеграция: запрос на бронь и обработка HTTP 409 | 2026-11-19 10:00 → 2026-11-19 11:00 | 2026-11-20 10:00 → 2026-11-20 11:00 |  |  |  |
| 70 | Скрипт имитации одновременного бронирования (нагрузочный тест) | 2026-11-19 10:00 → 2026-11-19 11:00 | 2026-11-20 10:00 → 2026-11-20 11:00 |  |  |  |
| 71 | Прогон сценариев, проверка отката транзакции | 2026-11-20 10:00 → 2026-11-20 11:00 | 2026-11-20 17:00 → 2026-11-23 09:00 (+3d) |  |  |  |
| 72 | Спринт 3 принят | 2026-11-20 17:00 → 2026-11-23 09:00 (+3d) | 2026-11-20 17:00 → 2026-11-23 09:00 (+3d) |  |  |  |
| 73 | Сценарий успешной/неуспешной оплаты и формат данных для QR | 2026-11-30 08:00 → 2026-11-30 09:00 | 2026-11-30 11:00 → 2026-11-30 12:00 |  | 72FS+40h → 72FS+4.88d |  |
| 74 | Создание таблицы tickets, связь с bookings | 2026-11-30 11:00 → 2026-11-30 13:00 | 2026-11-30 16:00 → 2026-11-30 17:00 |  |  |  |
| 75 | Имитация оплаты, генерация QR (qrcode), API получения QR | 2026-11-30 16:00 → 2026-12-01 08:00 (+1d) | 2026-12-02 11:00 → 2026-12-02 12:00 |  |  |  |
| 76 | Вёрстка страницы оплаты и личного кабинета с билетами | 2026-11-30 11:00 → 2026-11-30 13:00 | 2026-12-01 11:00 → 2026-12-01 12:00 |  |  |  |
| 77 | Отрисовка QR-кода на экране телефона (base64 через API) | 2026-12-02 11:00 → 2026-12-02 13:00 | 2026-12-03 09:00 → 2026-12-03 10:00 |  |  |  |
| 78 | Тестирование сценариев сбоя оплаты | 2026-12-02 11:00 → 2026-12-02 13:00 | 2026-12-02 16:00 → 2026-12-02 17:00 |  |  |  |
| 79 | Проверка читаемости QR-кода обычным сканером | 2026-12-03 09:00 → 2026-12-04 08:00 (+1d) | 2026-12-03 14:00 → 2026-12-04 12:00 (+1d) |  |  |  |
| 80 | Требования к интерфейсу контроллера (ввод кода/сканирование) | 2026-11-30 11:00 → 2026-11-30 13:00 | 2026-11-30 14:00 → 2026-11-30 15:00 |  |  |  |
| 81 | API валидации билета (действителен/просрочен/подделка) | 2026-12-02 11:00 → 2026-12-02 13:00 | 2026-12-03 09:00 → 2026-12-03 10:00 |  |  |  |
| 82 | Вёрстка страницы контроллера | 2026-12-03 09:00 → 2026-12-03 10:00 | 2026-12-03 16:00 → 2026-12-03 17:00 |  |  |  |
| 83 | Интеграция страницы контроллера с API валидации | 2026-12-03 16:00 → 2026-12-04 13:00 (+1d) | 2026-12-04 11:00 → 2026-12-04 17:00 |  |  |  |
| 84 | Создание базы тестовых QR-кодов | 2026-12-03 09:00 → 2026-12-03 10:00 | 2026-12-03 14:00 → 2026-12-03 15:00 |  |  |  |
| 85 | Тестирование проходного режима | 2026-12-04 11:00 → 2026-12-07 09:00 (+3d) | 2026-12-04 16:00 → 2026-12-07 14:00 (+3d) |  |  | resources Frontend; QA → QA |
| 86 | End-to-End тестирование: от регистрации до прохода по QR | 2026-12-04 16:00 → 2026-12-07 14:00 (+3d) | 2026-12-07 16:00 → 2026-12-08 14:00 (+1d) |  |  |  |
| 87 | Регрессионное тестирование | 2026-12-07 16:00 → 2026-12-08 14:00 (+1d) | 2026-12-08 16:00 → 2026-12-09 14:00 (+1d) |  |  |  |
| 88 | Спринт 4 принят | 2026-12-08 16:00 → 2026-12-09 14:00 (+1d) | 2026-12-08 16:00 → 2026-12-09 14:00 (+1d) |  |  |  |

## Version 4 (saved 2026-11-19)

Note of the change: docs: еженедельные повторяющиеся задачи в диаграмме Ганта (ЛР-6)

Last finish stays 2026-12-11.

Added:

| ID | Task | Duration | Start | Finish | Resources |
| --- | --- | --- | --- | --- | --- |
| 3 | **Модерация Scrum-событий (планирование спринтов, дейли, ретро)** | 35d | 2026-10-19 09:00 | 2026-12-07 11:00 |  |
| 4 | Модерация Scrum-событий (планирование спринтов, дейли, ретро) — 19.10.2026 | 0.25d | 2026-10-19 09:00 | 2026-10-19 11:00 | PM / Backend |
| 5 | Модерация Scrum-событий (планирование спринтов, дейли, ретро) — 26.10.2026 | 0.25d | 2026-10-26 09:00 | 2026-10-26 11:00 | PM / Backend |
| 6 | Модерация Scrum-событий (планирование спринтов, дейли, ретро) — 02.11.2026 | 0.25d | 2026-11-02 09:00 | 2026-11-02 11:00 | PM / Backend |
| 7 | Модерация Scrum-событий (планирование спринтов, дейли, ретро) — 09.11.2026 | 0.25d | 2026-11-09 09:00 | 2026-11-09 11:00 | PM / Backend |
| 8 | Модерация Scrum-событий (планирование спринтов, дейли, ретро) — 16.11.2026 | 0.25d | 2026-11-16 09:00 | 2026-11-16 11:00 | PM / Backend |
| 9 | Модерация Scrum-событий (планирование спринтов, дейли, ретро) — 23.11.2026 | 0.25d | 2026-11-23 09:00 | 2026-11-23 11:00 | PM / Backend |
| 10 | Модерация Scrum-событий (планирование спринтов, дейли, ретро) — 30.11.2026 | 0.25d | 2026-11-30 09:00 | 2026-11-30 11:00 | PM / Backend |
| 11 | Модерация Scrum-событий (планирование спринтов, дейли, ретро) — 07.12.2026 | 0.25d | 2026-12-07 09:00 | 2026-12-07 11:00 | PM / Backend |
| 12 | **Участие в ежедневных летучках и обновление статусов в Trello/Jira** | 35d | 2026-10-19 11:00 | 2026-12-07 12:00 |  |
| 13 | Участие в ежедневных летучках и обновление статусов в Trello/Jira — 19.10.2026 | 0.12d | 2026-10-19 11:00 | 2026-10-19 12:00 | PM / Backend; Lead Dev; Frontend; QA; Аналитик |
| 14 | Участие в ежедневных летучках и обновление статусов в Trello/Jira — 26.10.2026 | 0.12d | 2026-10-26 11:00 | 2026-10-26 12:00 | PM / Backend; Lead Dev; Frontend; QA; Аналитик |
| 15 | Участие в ежедневных летучках и обновление статусов в Trello/Jira — 02.11.2026 | 0.12d | 2026-11-02 11:00 | 2026-11-02 12:00 | PM / Backend; Lead Dev; Frontend; QA; Аналитик |
| 16 | Участие в ежедневных летучках и обновление статусов в Trello/Jira — 09.11.2026 | 0.12d | 2026-11-09 11:00 | 2026-11-09 12:00 | PM / Backend; Lead Dev; Frontend; QA; Аналитик |
| 17 | Участие в ежедневных летучках и обновление статусов в Trello/Jira — 16.11.2026 | 0.12d | 2026-11-16 11:00 | 2026-11-16 12:00 | PM / Backend; Lead Dev; Frontend; QA; Аналитик |
| 18 | Участие в ежедневных летучках и обновление статусов в Trello/Jira — 23.11.2026 | 0.12d | 2026-11-23 11:00 | 2026-11-23 12:00 | PM / Backend; Lead Dev; Frontend; QA; Аналитик |
| 19 | Участие в ежедневных летучках и обновление статусов в Trello/Jira — 30.11.2026 | 0.12d | 2026-11-30 11:00 | 2026-11-30 12:00 | PM / Backend; Lead Dev; Frontend; QA; Аналитик |
| 20 | Участие в ежедневных летучках и обновление статусов в Trello/Jira — 07.12.2026 | 0.12d | 2026-12-07 11:00 | 2026-12-07 12:00 | PM / Backend; Lead Dev; Frontend; QA; Аналитик |
| 21 | **Ведение реестра рисков и расчёт метрик EVM** | 35d | 2026-10-19 13:00 | 2026-12-07 14:00 |  |
| 22 | Ведение реестра рисков и расчёт метрик EVM — 19.10.2026 | 0.12d | 2026-10-19 13:00 | 2026-10-19 14:00 | PM / Backend |
| 23 | Ведение реестра рисков и расчёт метрик EVM — 26.10.2026 | 0.12d | 2026-10-26 13:00 | 2026-10-26 14:00 | PM / Backend |
| 24 | Ведение реестра рисков и расчёт метрик EVM — 02.11.2026 | 0.12d | 2026-11-02 13:00 | 2026-11-02 14:00 | PM / Backend |
| 25 | Ведение реестра рисков и расчёт метрик EVM — 09.11.2026 | 0.12d | 2026-11-09 13:00 | 2026-11-09 14:00 | PM / Backend |
| 26 | Ведение реестра рисков и расчёт метрик EVM — 16.11.2026 | 0.12d | 2026-11-16 13:00 | 2026-11-16 14:00 | PM / Backend |
| 27 | Ведение реестра рисков и расчёт метрик EVM — 23.11.2026 | 0.12d | 2026-11-23 13:00 | 2026-11-23 14:00 | PM / Backend |
| 28 | Ведение реестра рисков и расчёт метрик EVM — 30.11.2026 | 0.12d | 2026-11-30 13:00 | 2026-11-30 14:00 | PM / Backend |
| 38 | **Организация инфраструктуры разработки (DevOps)** | 35.38d | 2026-10-20 08:00 | 2026-12-09 11:00 |  |
| 45 | **Модуль «Авторизация и профиль» (Спринт 1)** | 3.75d | 2026-10-20 13:00 | 2026-10-26 10:00 |  |
| 54 | **Модуль «Афиша и сеансы» (Спринт 2)** | 3.5d | 2026-11-02 08:00 | 2026-11-06 12:00 |  |
| 63 | **Модуль «Схема зала и бронирование» (Спринт 3)** | 5d | 2026-11-16 08:00 | 2026-11-20 17:00 |  |

Removed: 2 Организация инфраструктуры разработки (DevOps); 3 Модуль «Авторизация и профиль» (Спринт 1); 4 Модуль «Афиша и сеансы» (Спринт 2); 5 Модуль «Схема зала и бронирование» (Спринт 3); 17 Участие в ежедневных летучках и обновление статусов в Trello/Jira; 26 Ведение реестра рисков и расчёт метрик EVM

Changed:

| ID | Task | Start | Finish | Duration | Predecessors | Other |
| --- | --- | --- | --- | --- | --- | --- |
| 1 | **Управление проектом и документация (командный менеджмент)** |  |  | 312h → 39d |  |  |
| 2 | **Еженедельные практики (повторяющиеся задачи)** | 2026-10-19 08:00 → 2026-10-19 09:00 | 2026-12-07 12:00 → 2026-12-07 14:00 | 276h → 35d |  |  |
| 29 | Ведение реестра рисков и расчёт метрик EVM — 07.12.2026 | 2026-10-19 08:00 → 2026-12-07 13:00 (+49d) | 2026-10-19 09:00 → 2026-12-07 14:00 (+49d) | 1h → 0.12d |  | was named Модерация Scrum-событий (планирование спринтов, дейли, ретро); resources none → PM / Backend |
| 30 | Разработка Устава проекта, согласование со стейкхолдерами | 2026-10-20 13:00 → 2026-10-19 08:00 (-1d) | 2026-10-21 12:00 → 2026-10-19 17:00 (-2d) |  |  |  |
| 31 | Декомпозиция WBS, построение диаграммы Ганта |  |  |  | none → 30 |  |
| 32 | Финальная ретроспектива (Start-Stop-Continue) | 2026-12-10 08:00 → 2026-12-09 11:00 (-1d) | 2026-12-10 10:00 → 2026-12-09 14:00 (-1d) |  | 88 → 44 |  |
| 33 | Внедрение и сопровождение User Manual | 2026-12-02 13:00 → 2026-12-04 16:00 (+2d) | 2026-12-02 17:00 → 2026-12-07 11:00 (+5d) |  | none → 85 |  |
| 34 | Сборка портфолио и подготовка презентации к защите | 2026-12-03 08:00 → 2026-12-07 16:00 (+4d) | 2026-12-03 17:00 → 2026-12-08 16:00 (+5d) |  | 33 → 86 |  |
| 35 | Подготовка к защите, сдача проекта | 2026-12-10 10:00 → 2026-12-09 14:00 (-1d) | 2026-12-10 15:00 → 2026-12-10 09:00 |  | 32, 34 → 32, 33, 34 |  |
| 36 | Защита проекта | 2026-12-11 13:00 → 2026-12-10 09:00 (-1d) | 2026-12-11 13:00 → 2026-12-10 09:00 (-1d) |  | 35, 44 → 35 |  |
| 39 | Инициализация Git-репозитория, настройка Git-flow (main, dev, feature) | 2026-10-21 13:00 → 2026-10-20 08:00 (-1d) | 2026-10-21 17:00 → 2026-10-20 12:00 (-1d) |  | none → 30 |  |
| 40 | Разработка инструкции по локальному запуску проекта (README) |  |  |  | none → 39 |  |
| 41 | Настройка пайплайна CI (GitHub Actions: линтеры/тесты) | 2026-10-22 08:00 → 2026-10-21 08:00 (-1d) | 2026-10-22 15:00 → 2026-10-21 15:00 (-1d) |  |  |  |
| 42 | Развёртывание локальной СУБД PostgreSQL для тестов |  |  |  | none → 39 |  |
| 43 | Настройка скриптов деплоя на тестовый сервер (VPS) | 2026-10-27 08:00 → 2026-10-21 15:00 (-6d) | 2026-10-27 15:00 → 2026-10-22 12:00 (-5d) |  |  |  |
| 44 | Деплой финальной версии на сервер | 2026-12-11 08:00 → 2026-12-08 16:00 (-3d) | 2026-12-11 12:00 → 2026-12-09 11:00 (-2d) |  | none → 88, 43 |  |
| 46 | Написание Use Cases и критериев DoD для входа/регистрации |  |  |  | none → 31 | resources Аналитик → Аналитик; QA |
| 47 | Проектирование и создание таблицы users | 2026-10-22 15:00 → 2026-10-21 08:00 (-1d) | 2026-10-23 10:00 → 2026-10-21 12:00 (-2d) |  | 46 → 46, 39 |  |
| 48 | Реализация JWT-авторизации и разграничения ролей | 2026-10-23 10:00 → 2026-10-21 13:00 (-2d) | 2026-10-26 15:00 → 2026-10-22 17:00 (-4d) |  |  |  |
| 50 | Интеграция форм с API авторизации (сохранение токена) | 2026-10-27 08:00 → 2026-10-23 08:00 (-4d) | 2026-10-27 15:00 → 2026-10-23 15:00 (-4d) |  |  |  |
| 52 | Прогон тестов, заведение багов в Jira | 2026-10-27 15:00 → 2026-10-23 15:00 (-4d) | 2026-10-28 10:00 → 2026-10-26 10:00 (-2d) |  | 50, 51 → 50, 51, 42 |  |
| 53 | Спринт 1 принят | 2026-10-28 10:00 → 2026-10-26 10:00 (-2d) | 2026-10-28 10:00 → 2026-10-26 10:00 (-2d) |  |  |  |
| 55 | Формирование User Stories на просмотр афиши и расписания |  |  |  | 53FS+2.88d → 53FS+38h |  |
| 56 | Создание таблиц movies, sessions | 2026-11-02 13:00 → 2026-11-02 10:00 | 2026-11-03 10:00 → 2026-11-02 17:00 (-1d) |  |  |  |
| 57 | Разработка эндпоинтов GET /movies и GET /sessions | 2026-11-03 10:00 → 2026-11-03 08:00 | 2026-11-05 10:00 → 2026-11-03 17:00 (-2d) |  | 56 → 56, 48 |  |
| 58 | Вёрстка карточек фильмов и страницы выбора сеанса | 2026-11-02 13:00 → 2026-11-02 10:00 | 2026-11-03 15:00 → 2026-11-03 12:00 |  |  |  |
| 59 | Подключение API афиши к интерфейсу | 2026-11-05 10:00 → 2026-11-05 08:00 | 2026-11-05 17:00 → 2026-11-05 15:00 |  |  |  |
| 60 | Написание тест-кейсов на отображение пустого расписания | 2026-11-02 13:00 → 2026-11-02 10:00 | 2026-11-02 15:00 → 2026-11-02 12:00 |  |  |  |
| 61 | Проверка вёрстки на разных разрешениях, фикс багов | 2026-11-06 08:00 → 2026-11-05 15:00 (-1d) | 2026-11-06 15:00 → 2026-11-06 12:00 |  |  |  |
| 62 | Спринт 2 принят | 2026-11-06 15:00 → 2026-11-06 12:00 | 2026-11-06 15:00 → 2026-11-06 12:00 |  |  |  |
| 64 | Описание логики блокировки мест при одновременном бронировании | 2026-11-16 09:00 → 2026-11-16 08:00 | 2026-11-16 14:00 → 2026-11-16 12:00 |  | 62FS+5.25d → 62FS+44h |  |
| 65 | Разработка структуры таблиц halls, seats, bookings | 2026-11-16 14:00 → 2026-11-16 13:00 | 2026-11-17 11:00 → 2026-11-17 10:00 |  |  |  |
| 66 | API POST /bookings с SELECT FOR UPDATE (защита от двойных продаж) | 2026-11-17 11:00 → 2026-11-17 10:00 | 2026-11-19 11:00 → 2026-11-19 10:00 |  |  |  |
| 67 | Вёрстка интерактивной схемы зала (CSS Grid, статусы мест) | 2026-11-16 14:00 → 2026-11-16 13:00 | 2026-11-18 11:00 → 2026-11-18 10:00 |  |  |  |
| 68 | Интеграция: запрос на бронь и обработка HTTP 409 | 2026-11-19 11:00 → 2026-11-19 10:00 | 2026-11-20 11:00 → 2026-11-20 10:00 |  |  |  |
| 69 | Скрипт имитации одновременного бронирования (нагрузочный тест) | 2026-11-19 11:00 → 2026-11-19 10:00 | 2026-11-20 11:00 → 2026-11-20 10:00 |  |  |  |
| 70 | Прогон сценариев, проверка отката транзакции | 2026-11-20 11:00 → 2026-11-20 10:00 | 2026-11-23 09:00 → 2026-11-20 17:00 (-3d) |  |  |  |
| 71 | Спринт 3 принят | 2026-11-23 09:00 → 2026-11-20 17:00 (-3d) | 2026-11-23 09:00 → 2026-11-20 17:00 (-3d) |  |  |  |
| 72 | **Спринт 4. Оплата, QR, панель контроллера и финальное тестирование** |  | 2026-12-09 17:00 → 2026-12-08 16:00 (-1d) | 64h → 6.88d |  |  |
| 73 | Сценарий успешной/неуспешной оплаты и формат данных для QR | 2026-11-30 09:00 → 2026-11-30 08:00 | 2026-11-30 12:00 → 2026-11-30 11:00 |  | 71FS+4.88d → 71FS+40h |  |
| 74 | Создание таблицы tickets, связь с bookings | 2026-11-30 13:00 → 2026-11-30 11:00 | 2026-11-30 17:00 → 2026-11-30 16:00 |  |  |  |
| 75 | Имитация оплаты, генерация QR (qrcode), API получения QR | 2026-12-01 08:00 → 2026-11-30 16:00 (-1d) | 2026-12-02 12:00 → 2026-12-02 11:00 |  |  |  |
| 76 | Вёрстка страницы оплаты и личного кабинета с билетами | 2026-11-30 13:00 → 2026-11-30 11:00 | 2026-12-01 12:00 → 2026-12-01 11:00 |  |  |  |
| 77 | Отрисовка QR-кода на экране телефона (base64 через API) | 2026-12-02 13:00 → 2026-12-02 11:00 | 2026-12-03 10:00 → 2026-12-03 09:00 |  |  |  |
| 78 | Тестирование сценариев сбоя оплаты | 2026-12-02 13:00 → 2026-12-02 11:00 | 2026-12-02 17:00 → 2026-12-02 16:00 |  |  |  |
| 79 | Проверка читаемости QR-кода обычным сканером | 2026-12-04 08:00 → 2026-12-03 09:00 (-1d) | 2026-12-04 12:00 → 2026-12-03 14:00 (-1d) |  |  |  |
| 80 | Требования к интерфейсу контроллера (ввод кода/сканирование) | 2026-11-30 13:00 → 2026-11-30 11:00 | 2026-11-30 15:00 → 2026-11-30 14:00 |  |  |  |
| 81 | API валидации билета (действителен/просрочен/подделка) | 2026-12-02 13:00 → 2026-12-02 11:00 | 2026-12-03 10:00 → 2026-12-03 09:00 |  |  |  |
| 82 | Вёрстка страницы контроллера | 2026-12-03 10:00 → 2026-12-03 09:00 | 2026-12-03 17:00 → 2026-12-03 16:00 |  |  |  |
| 83 | Интеграция страницы контроллера с API валидации | 2026-12-04 13:00 → 2026-12-03 16:00 (-1d) | 2026-12-04 17:00 → 2026-12-04 11:00 |  |  |  |
| 84 | Создание базы тестовых QR-кодов | 2026-12-03 10:00 → 2026-12-03 09:00 | 2026-12-03 15:00 → 2026-12-03 14:00 |  |  |  |
| 85 | Тестирование проходного режима | 2026-12-07 09:00 → 2026-12-04 11:00 (-3d) | 2026-12-07 14:00 → 2026-12-04 16:00 (-3d) |  |  | resources QA → Frontend; QA |
| 86 | End-to-End тестирование: от регистрации до прохода по QR | 2026-12-07 14:00 → 2026-12-04 16:00 (-3d) | 2026-12-08 14:00 → 2026-12-07 16:00 (-1d) |  |  |  |
| 87 | Регрессионное тестирование | 2026-12-08 14:00 → 2026-12-07 16:00 (-1d) | 2026-12-09 14:00 → 2026-12-08 16:00 (-1d) |  |  |  |
| 88 | Спринт 4 принят | 2026-12-09 14:00 → 2026-12-08 16:00 (-1d) | 2026-12-09 14:00 → 2026-12-08 16:00 (-1d) |  |  |  |

## Version 5 (saved 2026-11-19)

Note of the change: docs: убраны связи задач между спринтами в диаграмме Ганта (ЛР-6)

Last finish stays 2026-12-11.

Added:

| ID | Task | Duration | Start | Finish | Resources |
| --- | --- | --- | --- | --- | --- |
| 4 | Модерация Scrum-событий (планирование спринтов, дейли, ретро) | 312h | 2026-10-19 08:00 | 2026-12-11 17:00 | PM / Backend [5.13%] |
| 5 | Участие в ежедневных летучках и обновление статусов в Trello/Jira | 312h | 2026-10-19 08:00 | 2026-12-11 17:00 | PM / Backend [5.13%]; Lead Dev [5.13%]; Frontend [5.13%]; QA [5.13%]; Аналитик [5.13%] |
| 6 | Ведение реестра рисков и расчёт метрик EVM | 312h | 2026-10-19 08:00 | 2026-12-11 17:00 | PM / Backend [2.56%] |

Removed: 2 Еженедельные практики (повторяющиеся задачи); 3 Модерация Scrum-событий (планирование спринтов, дейли, ретро); 4 Модерация Scrum-событий (планирование спринтов, дейли, ретро) — 19.10.2026; 5 Модерация Scrum-событий (планирование спринтов, дейли, ретро) — 26.10.2026; 6 Модерация Scrum-событий (планирование спринтов, дейли, ретро) — 02.11.2026; 7 Модерация Scrum-событий (планирование спринтов, дейли, ретро) — 09.11.2026; 8 Модерация Scrum-событий (планирование спринтов, дейли, ретро) — 16.11.2026; 9 Модерация Scrum-событий (планирование спринтов, дейли, ретро) — 23.11.2026; 10 Модерация Scrum-событий (планирование спринтов, дейли, ретро) — 30.11.2026; 11 Модерация Scrum-событий (планирование спринтов, дейли, ретро) — 07.12.2026; 12 Участие в ежедневных летучках и обновление статусов в Trello/Jira; 13 Участие в ежедневных летучках и обновление статусов в Trello/Jira — 19.10.2026; 14 Участие в ежедневных летучках и обновление статусов в Trello/Jira — 26.10.2026; 15 Участие в ежедневных летучках и обновление статусов в Trello/Jira — 02.11.2026; 16 Участие в ежедневных летучках и обновление статусов в Trello/Jira — 09.11.2026; 17 Участие в ежедневных летучках и обновление статусов в Trello/Jira — 16.11.2026; 18 Участие в ежедневных летучках и обновление статусов в Trello/Jira — 23.11.2026; 19 Участие в ежедневных летучках и обновление статусов в Trello/Jira — 30.11.2026; 20 Участие в ежедневных летучках и обновление статусов в Trello/Jira — 07.12.2026; 21 Ведение реестра рисков и расчёт метрик EVM; 22 Ведение реестра рисков и расчёт метрик EVM — 19.10.2026; 23 Ведение реестра рисков и расчёт метрик EVM — 26.10.2026; 24 Ведение реестра рисков и расчёт метрик EVM — 02.11.2026; 25 Ведение реестра рисков и расчёт метрик EVM — 09.11.2026; 26 Ведение реестра рисков и расчёт метрик EVM — 16.11.2026; 27 Ведение реестра рисков и расчёт метрик EVM — 23.11.2026; 28 Ведение реестра рисков и расчёт метрик EVM — 30.11.2026; 29 Ведение реестра рисков и расчёт метрик EVM — 07.12.2026

Changed:

| ID | Task | Predecessors | Other |
| --- | --- | --- | --- |
| 7 | Финальная ретроспектива (Start-Stop-Continue) | 19 → none | constraint none → start no earlier than 2026-12-09 11:00 |
| 8 | Внедрение и сопровождение User Manual | 60 → none | constraint none → start no earlier than 2026-12-04 16:00 |
| 9 | Сборка портфолио и подготовка презентации к защите | 61 → none | constraint none → start no earlier than 2026-12-07 16:00 |
| 12 | Проект завершён (дедлайн 13.12) | 11 → 11, 4, 5, 6 |  |
| 14 | Инициализация Git-репозитория, настройка Git-flow (main, dev, feature) | 2 → none | constraint none → start no earlier than 2026-10-20 08:00 |
| 19 | Деплой финальной версии на сервер | 63, 18 → 63 |  |
| 21 | Написание Use Cases и критериев DoD для входа/регистрации | 3 → none | constraint none → start no earlier than 2026-10-20 13:00 |
| 22 | Проектирование и создание таблицы users | 21, 14 → 21 |  |
| 27 | Прогон тестов, заведение багов в Jira | 25, 26, 17 → 25, 26 |  |
| 32 | Разработка эндпоинтов GET /movies и GET /sessions | 31, 23 → 31 |  |
